# RapidSilicon

Schedule from ProjectLibre, 2021-04-12 to 2021-09-24.

## Calendars

- Standard: Mon-Fri 08:00-12:00, 13:00-17:00; Sat-Sun off.

## Resources

| Resource |
| --- |
| Unassigned |
| Anthony |
| Tuan |
| Greg |
| Tim |
| QuickLogic |
| CMC |
| Hugh |
| Duncan |
| James |
| Florian |
| Rick |
| Randy |

## Schedule

| ID | WBS | Task | Duration | Start | Finish | Complete | Constraint | Resources |
| --- | --- | --- | --- | --- | --- | --- | --- | --- |
| 1 | 1 | **Core-V-MCU-SoC (Arnold2)** | 120d? | 2021-04-12 | 2021-09-24 | 37% |  |  |
| 2 | 1.1 | **Documentation and Gate Review** | 106d? | 2021-04-12 | 2021-09-06 | 26% |  |  |
| 3 | 1.1.1 | Update PL document | 1d | 2021-04-12 | 2021-04-12 | 100% |  | Duncan; Hugh; Tim |
| 4 | 1.1.2 | Complete Project plan document/spreadsheet | 1d? | 2021-04-12 | 2021-04-12 | 100% |  | Duncan; Hugh; Tim |
| 5 | 1.1.3 | SoC specification | 5d | 2021-04-12 | 2021-04-16 |  |  | Greg |
| 6 | 1.1.4 | User Manual (ReadTheDocs) | 1d? | 2021-04-12 | 2021-04-12 |  |  | QuickLogic |
| 7 | 1.1.5 | Datasheet include operating conditions, AC/DC parameters, basic timing information | 1d? | 2021-09-06 | 2021-09-06 |  | start no earlier than 2021-09-06 | Tuan |
| 8 | 1.1.6 | "Whole Product Test" spec (SoC/s/w testing - preRTOS, FreeRTOS) | 3.75d | 2021-04-12 | 2021-04-15 | 50% |  | Anthony; Greg |
| 9 | 1.1.7 | Development kit specification/user guide | 1d? | 2021-04-12 | 2021-04-12 |  |  | Anthony |
| 10 | 1.1.8 | Development kit examples/demos (To be moved to DVK group) | 1d? | 2021-04-12 | 2021-04-12 |  |  |  |
| 11 | 1.1.9 | Characterization plan (testing operation of the first received board and chip)_ | 1d? | 2021-04-12 | 2021-04-12 |  |  | Anthony |
| 12 | 1.2 | **Project Setup** | 15.5d? | 2021-04-12 | 2021-05-03 | 50% |  |  |
| 13 | 1.2.1 | Merge Quicklogic/OpenHW Repo | 1d? | 2021-04-12 | 2021-04-12 | 100% |  | Florian; Greg; Tim |
| 14 | 1.2.2 | Repo review, license review for CQ | 0.5d? | 2021-05-03 | 2021-05-03 |  | start no earlier than 2021-05-03 | Duncan; Florian |
| 15 | 1.3 | **SoC Front End Design** | 45d? | 2021-05-03 | 2021-07-05 | 50% |  |  |
| 16 | 1.3.1 | Identify/procure the PLL source | 1d? | 2021-05-03 | 2021-05-03 |  | start no earlier than 2021-05-03 | Tim |
| 17 | 1.3.2 | Design verification plan, including bare-metal for verification | 5d | 2021-05-03 | 2021-05-07 |  | start no earlier than 2021-05-03 | Greg |
| 18 | 1.3.3 | **RTL Freeze checklist creation** | 3d? | 2021-05-03 | 2021-05-05 | 67% | start no earlier than 2021-05-03 |  |
| 19 | 1.3.3.1 | **Documentation** | 1d? | 2021-05-03 | 2021-05-03 | 68% |  |  |
| 20 | 1.3.3.1.1 | Simple Block Diagram | 1d? | 2021-05-03 | 2021-05-03 | 100% |  | Greg |
| 21 | 1.3.3.1.2 | System Addresses Mapping | 1d? | 2021-05-03 | 2021-05-03 | 100% |  | Greg |
| 22 | 1.3.3.1.3 | System Test & Test Modes | 1d? | 2021-05-03 | 2021-05-03 |  |  |  |
| 23 | 1.3.3.1.4 | Power Management | 1d? | 2021-05-03 | 2021-05-03 |  |  |  |
| 24 | 1.3.3.1.5 | System Clocks | 1d? | 2021-05-03 | 2021-05-03 | 75% |  | Greg |
| 25 | 1.3.3.1.6 | System Reset | 1d? | 2021-05-03 | 2021-05-03 | 100% |  | Greg |
| 26 | 1.3.3.1.7 | System programming & Update | 1d? | 2021-05-03 | 2021-05-03 | 100% |  | Greg |

Notes:
- 1: Original
- 2: Assigned to
- 3: Hugh, Tim, Duncan
- 4: Hugh, Tim, Duncan
- 5: Tim
- 6: Existed, to be published
- 8: Tim
- 9: Anthony, James
- 10: Anthony, James
- 11: Anthony, James
- 13: Tim, Florian, Greg
- 14: Duncan, Florian
- 16: Tim, Rick
- 17: Tim
- 18: Greg
- 20: v
- 21: v
- 24: 75%
- 25: v
- 26: efpga FCB v

| ID | WBS | Task | Duration | Start | Finish | Complete | Resources |
| --- | --- | --- | --- | --- | --- | --- | --- |
| 27 | 1.3.3.2 | **Modules & Regs Description** | 1d? | 2021-05-03 | 2021-05-03 | 75% |  |
| 28 | 1.3.3.2.1 | **Non UDMA** | 1d? | 2021-05-03 | 2021-05-03 | 67% |  |
| 29 | 1.3.3.2.1.1 | FLL | 1d? | 2021-05-03 | 2021-05-03 |  |  |
| 30 | 1.3.3.2.1.2 | eFPGA | 1d? | 2021-05-03 | 2021-05-03 |  |  |
| 31 | 1.3.3.2.1.3 | I2Cslave | 1d? | 2021-05-03 | 2021-05-03 | 100% | Greg |
| 32 | 1.3.3.2.1.4 | Timers | 1d? | 2021-05-03 | 2021-05-03 | 100% | Greg |
| 33 | 1.3.3.2.1.5 | Interrupt Controller | 1d? | 2021-05-03 | 2021-05-03 | 100% | Greg |
| 34 | 1.3.3.2.1.6 | Boot ROM | 1d? | 2021-05-03 | 2021-05-03 | 100% | Greg |
| 35 | 1.3.3.2.1.7 | FCB | 1d? | 2021-05-03 | 2021-05-03 | 100% | Greg |
| 36 | 1.3.3.2.1.8 | GPIO | 1d? | 2021-05-03 | 2021-05-03 | 100% | Greg |
| 37 | 1.3.3.2.1.9 | Other stuff | 1d? | 2021-05-03 | 2021-05-03 |  |  |
| 38 | 1.3.3.2.2 | **UDMA** | 1d? | 2021-05-03 | 2021-05-03 | 83% |  |
| 39 | 1.3.3.2.2.1 | UART | 1d? | 2021-05-03 | 2021-05-03 | 100% | Greg |
| 40 | 1.3.3.2.2.2 | I2C master | 1d? | 2021-05-03 | 2021-05-03 | 100% | Greg |
| 41 | 1.3.3.2.2.3 | QSPI master | 1d? | 2021-05-03 | 2021-05-03 | 100% | Greg |
| 42 | 1.3.3.2.2.4 | CAM | 1d? | 2021-05-03 | 2021-05-03 | 50% | Greg |
| 43 | 1.3.3.2.2.5 | SDIO | 1d? | 2021-05-03 | 2021-05-03 | 100% | Greg |
| 44 | 1.3.3.2.2.6 | Debug I/F | 1d? | 2021-05-03 | 2021-05-03 | 100% | Greg |
| 45 | 1.3.3.2.2.7 | PLL modules | 1d? | 2021-05-03 | 2021-05-03 |  |  |
| 46 | 1.3.3.2.2.8 | eFPGA | 1d? | 2021-05-03 | 2021-05-03 | 100% | Greg |
| 47 | 1.3.3.2.2.9 | Math Blocks | 1d? | 2021-05-03 | 2021-05-03 | 100% | Greg |
| 48 | 1.3.3.2.2.10 | Device IO | 1d? | 2021-05-03 | 2021-05-03 | 80% | Greg |
| 49 | 1.3.3.3 | **Designs** | 3d? | 2021-05-03 | 2021-05-05 | 68% |  |
| 50 | 1.3.3.3.1 | **RTL** | 1d? | 2021-05-03 | 2021-05-03 | 68% |  |
| 51 | 1.3.3.3.1.1 | Top module | 1d? | 2021-05-03 | 2021-05-03 | 100% | Greg |

Notes:
- 29: PLL
- 31: v
- 32: v
- 33: v
- 34: v
- 35: v
- 36: v
- 39: v
- 40: v
- 41: v
- 42: 50%
- 43: v
- 44: v
- 45: Tim
- 46: V
- 47: V
- 48: 80%
- 51: V

| ID | WBS | Task | Duration | Start | Finish | Complete | Resources |
| --- | --- | --- | --- | --- | --- | --- | --- |
| 52 | 1.3.3.3.1.2 | **Non UDMA** | 1d? | 2021-05-03 | 2021-05-03 | 100% |  |
| 53 | 1.3.3.3.1.2.1 | FLL (Xilinx for Emulation) | 1d? | 2021-05-03 | 2021-05-03 | 100% | Greg |
| 54 | 1.3.3.3.1.2.2 | PLL (SoC target) | 1d? | 2021-05-03 | 2021-05-03 | 100% | Greg |
| 55 | 1.3.3.3.1.2.3 | eFPGA | 1d? | 2021-05-03 | 2021-05-03 | 100% | Greg |
| 56 | 1.3.3.3.1.2.4 | I2Cslave | 1d? | 2021-05-03 | 2021-05-03 | 100% | Greg |
| 57 | 1.3.3.3.1.2.5 | Timers | 1d? | 2021-05-03 | 2021-05-03 | 100% | Greg |
| 58 | 1.3.3.3.1.2.6 | Interrupt Controller | 1d? | 2021-05-03 | 2021-05-03 | 100% | Greg |
| 59 | 1.3.3.3.1.2.7 | Boot ROM | 1d? | 2021-05-03 | 2021-05-03 | 100% | Greg |
| 60 | 1.3.3.3.1.2.8 | FCB | 1d? | 2021-05-03 | 2021-05-03 | 100% | Greg |
| 61 | 1.3.3.3.1.2.9 | GPIO | 1d? | 2021-05-03 | 2021-05-03 | 100% | Greg |
| 62 | 1.3.3.3.1.2.10 | Other stuff | 1d? | 2021-05-03 | 2021-05-03 | 100% | Greg |
| 63 | 1.3.3.3.1.3 | **UDMA** | 1d? | 2021-05-03 | 2021-05-03 | 58% |  |
| 64 | 1.3.3.3.1.3.1 | UART | 1d? | 2021-05-03 | 2021-05-03 | 100% | Greg |
| 65 | 1.3.3.3.1.3.2 | I2C master | 1d? | 2021-05-03 | 2021-05-03 | 100% | Greg |
| 66 | 1.3.3.3.1.3.3 | QSPI master | 1d? | 2021-05-03 | 2021-05-03 | 100% | Greg |
| 67 | 1.3.3.3.1.3.4 | CAM | 1d? | 2021-05-03 | 2021-05-03 | 50% | Greg |
| 68 | 1.3.3.3.1.3.5 | SDIO | 1d? | 2021-05-03 | 2021-05-03 |  |  |
| 69 | 1.3.3.3.1.3.6 | Debug I/F | 1d? | 2021-05-03 | 2021-05-03 |  |  |
| 70 | 1.3.3.3.1.4 | **eFPGA** | 1d? | 2021-05-03 | 2021-05-03 | 87% |  |
| 71 | 1.3.3.3.1.4.1 | Get VQ file running | 1d? | 2021-05-03 | 2021-05-03 | 70% | Greg |
| 72 | 1.3.3.3.1.4.2 | Test VQ | 1d? | 2021-05-03 | 2021-05-03 |  |  |
| 73 | 1.3.3.3.1.4.3 | Integrate FCB | 1d? | 2021-05-03 | 2021-05-03 | 100% | Greg |
| 74 | 1.3.3.3.1.4.4 | Validate FCB | 1d? | 2021-05-03 | 2021-05-03 | 100% | Greg |
| 75 | 1.3.3.3.1.4.5 | Integrate APB | 1d? | 2021-05-03 | 2021-05-03 | 100% | Greg |
| 76 | 1.3.3.3.1.4.6 | Validate APB | 1d? | 2021-05-03 | 2021-05-03 | 100% | Greg |
| 77 | 1.3.3.3.1.4.7 | Integrate TCDM | 1d? | 2021-05-03 | 2021-05-03 | 100% | Greg |
| 78 | 1.3.3.3.1.4.8 | Validate TCDM | 1d? | 2021-05-03 | 2021-05-03 | 100% | Greg |
| 79 | 1.3.3.3.1.4.9 | Integrate Event pins | 1d? | 2021-05-03 | 2021-05-03 | 100% | Greg |
| 80 | 1.3.3.3.1.4.10 | Validate Event pins | 1d? | 2021-05-03 | 2021-05-03 | 100% | Greg |

Notes:
- 53: v
- 54: v
- 55: v
- 56: v
- 57: v
- 58: v
- 59: v
- 60: v
- 61: v
- 62: v
- 64: v
- 65: v
- 66: v
- 67: 50%
- 71: 70%
- 73: v
- 74: v
- 75: v
- 76: v
- 77: v
- 78: v
- 79: v
- 80: v

| ID | WBS | Task | Duration | Start | Finish | Complete | Resources |
| --- | --- | --- | --- | --- | --- | --- | --- |
| 81 | 1.3.3.3.1.5 | **Math Blocks** | 1d? | 2021-05-03 | 2021-05-03 | 78% |  |
| 82 | 1.3.3.3.1.5.1 | 4-bit mode | 1d? | 2021-05-03 | 2021-05-03 | 100% | Greg |
| 83 | 1.3.3.3.1.5.2 | Lengthed accumulator | 1d? | 2021-05-03 | 2021-05-03 | 100% | Greg |
| 84 | 1.3.3.3.1.5.3 | Memory block sharing (3 per 2) | 1d? | 2021-05-03 | 2021-05-03 | 100% | Greg |
| 85 | 1.3.3.3.1.5.4 | Integrate 4 math blocks | 1d? | 2021-05-03 | 2021-05-03 | 100% | Greg |
| 86 | 1.3.3.3.1.5.5 | Validate math blocks | 1d? | 2021-05-03 | 2021-05-03 | 100% | Greg |
| 87 | 1.3.3.3.1.5.6 | Integrate eFPGA IO | 1d? | 2021-05-03 | 2021-05-03 | 100% | Greg |
| 88 | 1.3.3.3.1.5.7 | Validate eFPGA IO | 1d? | 2021-05-03 | 2021-05-03 | 100% | Greg |
| 89 | 1.3.3.3.1.5.8 | Integrate eFPGA test modes | 1d? | 2021-05-03 | 2021-05-03 |  |  |
| 90 | 1.3.3.3.1.5.9 | Validate eFPGA test modes | 1d? | 2021-05-03 | 2021-05-03 |  |  |
| 91 | 1.3.3.3.1.6 | **IO** | 1d? | 2021-05-03 | 2021-05-03 | 23% |  |
| 92 | 1.3.3.3.1.6.1 | Define VDDIO scheme | 1d? | 2021-05-03 | 2021-05-03 |  |  |
| 93 | 1.3.3.3.1.6.2 | Define physical I/O ring | 1d? | 2021-05-03 | 2021-05-03 |  |  |
| 94 | 1.3.3.3.1.6.3 | Finalize pin-table | 1d? | 2021-05-03 | 2021-05-03 | 90% | Greg |
| 95 | 1.3.3.3.1.6.4 | Integrate IO ring | 1d? | 2021-05-03 | 2021-05-03 |  |  |
| 96 | 1.3.3.3.1.7 | **I2C Slave** | 1d? | 2021-05-03 | 2021-05-03 | 100% |  |
| 97 | 1.3.3.3.1.7.1 | Create RTL | 1d? | 2021-05-03 | 2021-05-03 | 100% | Greg |
| 98 | 1.3.3.3.1.7.2 | Integrate I2C Slave | 1d? | 2021-05-03 | 2021-05-03 | 100% | Greg |
| 99 | 1.3.3.3.1.8 | **Power Management** | 1d? | 2021-05-03 | 2021-05-03 |  |  |
| 100 | 1.3.3.3.1.8.1 | Decide on LDO | 1d? | 2021-05-03 | 2021-05-03 |  |  |
| 101 | 1.3.3.3.1.8.2 | Source LDO | 1d? | 2021-05-03 | 2021-05-03 |  |  |
| 102 | 1.3.3.3.1.8.3 | Integrate | 1d? | 2021-05-03 | 2021-05-03 |  |  |
| 103 | 1.3.3.3.1.9 | **Test Logics** | 1d? | 2021-05-03 | 2021-05-03 |  |  |
| 104 | 1.3.3.3.1.9.1 | Logic test | 1d? | 2021-05-03 | 2021-05-03 |  |  |
| 105 | 1.3.3.3.1.9.2 | EFPGA test | 1d? | 2021-05-03 | 2021-05-03 |  |  |
| 106 | 1.3.3.3.1.9.3 | Memory test | 1d? | 2021-05-03 | 2021-05-03 |  |  |
| 107 | 1.3.3.3.1.9.4 | FLL test | 1d? | 2021-05-03 | 2021-05-03 |  |  |

Notes:
- 82: v
- 83: v
- 84: v
- 85: v
- 86: v
- 87: v
- 88: v
- 89: Randy
- 90: Randy
- 94: 90%
- 95: Global
- 97: v
- 98: v
- 100: No LDO
- 104: Backend?
- 105: Randy
- 106: Backend?
- 107: Backend?

| ID | WBS | Task | Duration | Start | Finish | Complete | Resources |
| --- | --- | --- | --- | --- | --- | --- | --- |
| 108 | 1.3.3.3.2 | **RTL Verification** | 1d? | 2021-05-03 | 2021-05-03 | 59% |  |
| 109 | 1.3.3.3.2.1 | **Setup Verification Environment** | 1d? | 2021-05-03 | 2021-05-03 | 50% |  |
| 110 | 1.3.3.3.2.1.1 | Tools decision | 1d? | 2021-05-03 | 2021-05-03 | 100% | Greg |
| 111 | 1.3.3.3.2.1.2 | TestBench Development | 1d? | 2021-05-03 | 2021-05-03 | 100% | Greg |
| 112 | 1.3.3.3.2.1.3 | **Collect/Create Peripherals (VPI)** | 1d? | 2021-05-03 | 2021-05-03 | 50% |  |
| 113 | 1.3.3.3.2.1.3.1 | SPI Flash | 1d? | 2021-05-03 | 2021-05-03 |  |  |
| 114 | 1.3.3.3.2.1.3.2 | I2C Slave device | 1d? | 2021-05-03 | 2021-05-03 | 100% | Greg |
| 115 | 1.3.3.3.2.1.3.3 | I2C Master device | 1d? | 2021-05-03 | 2021-05-03 | 100% | Greg |
| 116 | 1.3.3.3.2.1.3.4 | CAM device IP | 1d? | 2021-05-03 | 2021-05-03 | 50% | Greg |
| 117 | 1.3.3.3.2.1.3.5 | SDIO | 1d? | 2021-05-03 | 2021-05-03 |  |  |
| 118 | 1.3.3.3.2.1.3.6 | UART IP | 1d? | 2021-05-03 | 2021-05-03 | 100% | Greg |
| 119 | 1.3.3.3.2.1.3.7 | PLL | 1d? | 2021-05-03 | 2021-05-03 |  |  |
| 120 | 1.3.3.3.2.1.4 | **Collect/Create Behavioral models for Hard IPs** | 1d? | 2021-05-03 | 2021-05-03 |  |  |
| 121 | 1.3.3.3.2.1.4.1 | ROM | 1d? | 2021-05-03 | 2021-05-03 |  |  |
| 122 | 1.3.3.3.2.1.4.2 | L2 RAM | 1d? | 2021-05-03 | 2021-05-03 |  |  |
| 123 | 1.3.3.3.2.1.4.3 | Inferred RAM I2C M | 1d? | 2021-05-03 | 2021-05-03 |  |  |
| 124 | 1.3.3.3.2.1.4.4 | Math Block Register File | 1d? | 2021-05-03 | 2021-05-03 |  |  |
| 125 | 1.3.3.3.2.1.4.5 | Others | 1d? | 2021-05-03 | 2021-05-03 |  |  |
| 126 | 1.3.3.3.2.1.5 | Instantiate periphrals | 1d? | 2021-05-03 | 2021-05-03 | 100% | Greg |
| 127 | 1.3.3.3.2.1.6 | Create test-cases top level | 1d? | 2021-05-03 | 2021-05-03 | 100% | Greg |
| 128 | 1.3.3.3.2.1.7 | Instantiate SoC RTL | 1d? | 2021-05-03 | 2021-05-03 | 100% | Greg |
| 129 | 1.3.3.3.2.2 | CORE-V-MCU Block | 1d? | 2021-05-03 | 2021-05-03 |  |  |
| 130 | 1.3.3.3.2.3 | **APB** | 1d? | 2021-05-03 | 2021-05-03 | 77% |  |
| 131 | 1.3.3.3.2.3.1 | PLL | 1d? | 2021-05-03 | 2021-05-03 |  |  |
| 132 | 1.3.3.3.2.3.2 | FLL | 1d? | 2021-05-03 | 2021-05-03 |  |  |
| 133 | 1.3.3.3.2.3.3 | I2Cslave | 1d? | 2021-05-03 | 2021-05-03 | 100% | Greg |
| 134 | 1.3.3.3.2.3.4 | Timers | 1d? | 2021-05-03 | 2021-05-03 | 100% | Greg |

Notes:
- 110: v
- 111: v
- 113: UR
- 114: v
- 115: v
- 116: 50%
- 118: v
- 121: Global
- 126: v
- 127: v
- 128: v
- 133: v
- 134: v

| ID | WBS | Task | Duration | Start | Finish | Complete | Resources |
| --- | --- | --- | --- | --- | --- | --- | --- |
| 135 | 1.3.3.3.2.3.5 | **Interrupt Controller** | 1d? | 2021-05-03 | 2021-05-03 | 100% |  |
| 136 | 1.3.3.3.2.3.5.1 | Event Pins | 1d? | 2021-05-03 | 2021-05-03 | 100% | Greg |
| 137 | 1.3.3.3.2.3.5.2 | Fast IRQ | 1d? | 2021-05-03 | 2021-05-03 | 100% | Greg |
| 138 | 1.3.3.3.2.3.5.3 | GPIO | 1d? | 2021-05-03 | 2021-05-03 | 100% | Greg |
| 139 | 1.3.3.3.2.3.6 | **SoC Control** | 1d? | 2021-05-03 | 2021-05-03 | 83% |  |
| 140 | 1.3.3.3.2.3.6.1 | Pin Mux | 1d? | 2021-05-03 | 2021-05-03 | 100% | Greg |
| 141 | 1.3.3.3.2.3.6.2 | PAD Config | 1d? | 2021-05-03 | 2021-05-03 |  |  |
| 142 | 1.3.3.3.2.3.6.3 | WatchDog Timer | 1d? | 2021-05-03 | 2021-05-03 | 90% | Greg |
| 143 | 1.3.3.3.2.3.6.4 | Ready Timer | 1d? | 2021-05-03 | 2021-05-03 | 100% | Greg |
| 144 | 1.3.3.3.2.3.6.5 | Soft Reset Circuits | 1d? | 2021-05-03 | 2021-05-03 | 100% | Greg |
| 145 | 1.3.3.3.2.3.6.6 | Boot Select Status | 1d? | 2021-05-03 | 2021-05-03 | 100% | Greg |
| 146 | 1.3.3.3.2.3.6.7 | Boot ROM | 1d? | 2021-05-03 | 2021-05-03 | 90% | Greg |
| 147 | 1.3.3.3.2.4 | **UDMA** | 1d? | 2021-05-03 | 2021-05-03 | 58% |  |
| 148 | 1.3.3.3.2.4.1 | UART | 1d? | 2021-05-03 | 2021-05-03 | 100% | Greg |
| 149 | 1.3.3.3.2.4.2 | I2C master | 1d? | 2021-05-03 | 2021-05-03 | 100% | Greg |
| 150 | 1.3.3.3.2.4.3 | QSPI master | 1d? | 2021-05-03 | 2021-05-03 | 100% | Greg |
| 151 | 1.3.3.3.2.4.4 | CAM | 1d? | 2021-05-03 | 2021-05-03 | 50% | Greg |
| 152 | 1.3.3.3.2.4.5 | SDIO | 1d? | 2021-05-03 | 2021-05-03 |  |  |
| 153 | 1.3.3.3.2.4.6 | Debug I/F | 1d? | 2021-05-03 | 2021-05-03 |  |  |
| 154 | 1.3.3.3.2.5 | **eFPGA** | 1d? | 2021-05-03 | 2021-05-03 | 100% |  |
| 155 | 1.3.3.3.2.5.1 | FCB | 1d? | 2021-05-03 | 2021-05-03 | 100% | Greg |
| 156 | 1.3.3.3.2.5.2 | IO Ring | 1d? | 2021-05-03 | 2021-05-03 | 100% | Greg |
| 157 | 1.3.3.3.2.5.3 | ASSP interface | 1d? | 2021-05-03 | 2021-05-03 | 100% | Greg |
| 158 | 1.3.3.3.2.5.4 | Math Blocks | 1d? | 2021-05-03 | 2021-05-03 | 100% | Greg |
| 159 | 1.3.3.3.2.5.5 | TCDM | 1d? | 2021-05-03 | 2021-05-03 | 100% | Greg |
| 160 | 1.3.3.3.2.6 | APB | 1d? | 2021-05-03 | 2021-05-03 | 100% | Greg |
| 161 | 1.3.3.3.2.7 | LDO | 1d? | 2021-05-03 | 2021-05-03 |  |  |

Notes:
- 136: v
- 137: v
- 138: v
- 140: v
- 141: IO ring
- 142: 90%
- 143: v
- 144: v
- 145: v
- 146: 90%
- 148: v
- 149: v
- 150: v
- 151: 50%
- 155: v
- 156: v
- 157: v
- 158: v
- 159: v
- 160: v
- 161: No LDO

| ID | WBS | Task | Duration | Start | Finish | Complete | Resources |
| --- | --- | --- | --- | --- | --- | --- | --- |
| 162 | 1.3.3.3.2.8 | **Test Logics** | 1d? | 2021-05-03 | 2021-05-03 |  |  |
| 163 | 1.3.3.3.2.8.1 | Logic test | 1d? | 2021-05-03 | 2021-05-03 |  |  |
| 164 | 1.3.3.3.2.8.2 | EFPGA test | 1d? | 2021-05-03 | 2021-05-03 |  |  |
| 165 | 1.3.3.3.2.8.3 | Memory test | 1d? | 2021-05-03 | 2021-05-03 |  |  |
| 166 | 1.3.3.3.2.8.4 | FLL test | 1d? | 2021-05-03 | 2021-05-03 |  |  |
| 167 | 1.3.3.3.3 | **Design Compiler Synthesis** | 1d? | 2021-05-03 | 2021-05-03 |  |  |
| 168 | 1.3.3.3.3.1 | **Constraints Setup** | 1d? | 2021-05-03 | 2021-05-03 |  |  |
| 169 | 1.3.3.3.3.1.1 | Get Synthesis Silicon Constraints | 1d? | 2021-05-03 | 2021-05-03 |  |  |
| 170 | 1.3.3.3.3.1.2 | Define System Clock Constraints | 1d? | 2021-05-03 | 2021-05-03 |  |  |
| 171 | 1.3.3.3.3.1.3 | Get Test Synthesis Constraints | 1d? | 2021-05-03 | 2021-05-03 |  |  |
| 172 | 1.3.3.3.3.2 | Implement synthesis scripts | 1d? | 2021-05-03 | 2021-05-03 |  |  |
| 173 | 1.3.3.3.3.3 | Execute Synthesis and Fix errors | 1d? | 2021-05-03 | 2021-05-03 |  |  |
| 174 | 1.3.3.3.4 | **Emulation Validation - Nexys A7** | 1d? | 2021-05-03 | 2021-05-03 | 94% |  |
| 175 | 1.3.3.3.4.1 | Define Emulation system & Peripherals | 1d? | 2021-05-03 | 2021-05-03 | 100% | Greg |
| 176 | 1.3.3.3.4.2 | Implement Nightly Build scripts | 1d? | 2021-05-03 | 2021-05-03 | 100% | Greg |
| 177 | 1.3.3.3.4.3 | Implement Emulation Build scripts | 1d? | 2021-05-03 | 2021-05-03 | 100% | Greg |
| 178 | 1.3.3.3.4.4 | **Develop Test SW for emulkation** | 1d? | 2021-05-03 | 2021-05-03 | 91% |  |
| 179 | 1.3.3.3.4.4.1 | CLI Framework | 1d? | 2021-05-03 | 2021-05-03 | 100% | Greg |
| 180 | 1.3.3.3.4.4.2 | Add I2Cmaster tests | 1d? | 2021-05-03 | 2021-05-03 | 100% | Greg |
| 181 | 1.3.3.3.4.4.3 | Add UART tests | 1d? | 2021-05-03 | 2021-05-03 | 100% | Greg |
| 182 | 1.3.3.3.4.4.4 | Add QSPImaster tests | 1d? | 2021-05-03 | 2021-05-03 | 100% | Greg |
| 183 | 1.3.3.3.4.4.5 | Add Camera Tests | 1d? | 2021-05-03 | 2021-05-03 | 50% | Greg |
| 184 | 1.3.3.3.4.4.6 | Add IO tests | 1d? | 2021-05-03 | 2021-05-03 | 100% | Greg |
| 185 | 1.3.3.3.4.4.7 | Add MathBlocks tests | 1d? | 2021-05-03 | 2021-05-03 | 100% | Greg |
| 186 | 1.3.3.3.4.4.8 | Add System memory tests | 1d? | 2021-05-03 | 2021-05-03 | 100% | Greg |
| 187 | 1.3.3.3.4.4.9 | Add BootLoader | 1d? | 2021-05-03 | 2021-05-03 | 100% | Greg |
| 188 | 1.3.3.3.4.4.10 | Add TCDM tests | 1d? | 2021-05-03 | 2021-05-03 | 100% | Greg |
| 189 | 1.3.3.3.4.4.11 | Add UDMA tests | 1d? | 2021-05-03 | 2021-05-03 | 100% | Greg |
| 190 | 1.3.3.3.4.4.12 | Add I2Cslave tests | 1d? | 2021-05-03 | 2021-05-03 | 100% | Greg |
| 191 | 1.3.3.3.4.4.13 | Add Camera interface tests | 1d? | 2021-05-03 | 2021-05-03 | 100% | Greg |
| 192 | 1.3.3.3.4.4.14 | Add test Logic tests | 1d? | 2021-05-03 | 2021-05-03 |  |  |
| 193 | 1.3.3.3.4.4.15 | Add FPGA FCB tests | 1d? | 2021-05-03 | 2021-05-03 | 100% | Greg |
| 194 | 1.3.3.3.4.4.16 | Add FPGA IO tests | 1d? | 2021-05-03 | 2021-05-03 | 100% | Greg |
| 195 | 1.3.3.3.4.4.17 | Add FPGA ASSP interface tests | 1d? | 2021-05-03 | 2021-05-03 | 100% | Greg |

Notes:
- 163: backend?
- 164: Greg to talk to KC
- 166: PLL? Tim, bootloader?
- 169: backend?
- 170: backend?
- 171: backend?
- 172: Tim
- 173: Randy?
- 175: v
- 176: v
- 177: v
- 179: v
- 180: v
- 181: v
- 182: v
- 183: 50%
- 184: v
- 185: v
- 186: v
- 187: v
- 188: v
- 189: v
- 190: v
- 191: v
- 193: v
- 194: v
- 195: v

| ID | WBS | Task | Duration | Start | Finish | Predecessors | Complete | Constraint | Resources |
| --- | --- | --- | --- | --- | --- | --- | --- | --- | --- |
| 196 | 1.3.3.3.4.5 | **Emulation Validation** | 1d? | 2021-05-03 | 2021-05-03 |  | 96% |  |  |
| 197 | 1.3.3.3.4.5.1 | Validate UART | 1d? | 2021-05-03 | 2021-05-03 |  | 100% |  | Greg |
| 198 | 1.3.3.3.4.5.2 | Validate I2C master | 1d? | 2021-05-03 | 2021-05-03 |  | 100% |  | Greg |
| 199 | 1.3.3.3.4.5.3 | Validate QSPI master | 1d? | 2021-05-03 | 2021-05-03 |  | 100% |  | Greg |
| 200 | 1.3.3.3.4.5.4 | Validate GPIO | 1d? | 2021-05-03 | 2021-05-03 |  | 100% |  | Greg |
| 201 | 1.3.3.3.4.5.5 | Validate GPIO interrupts | 1d? | 2021-05-03 | 2021-05-03 |  | 100% |  | Greg |
| 202 | 1.3.3.3.4.5.6 | Validate CAM | 1d? | 2021-05-03 | 2021-05-03 |  | 50% |  | Greg |
| 203 | 1.3.3.3.4.5.7 | Validate I2C slave | 1d? | 2021-05-03 | 2021-05-03 |  | 100% |  | Greg |
| 204 | 1.3.3.3.4.5.8 | Validate PWM | 1d? | 2021-05-03 | 2021-05-03 |  | 100% |  | Greg |
| 205 | 1.3.3.3.4.5.9 | Validate timers | 1d? | 2021-05-03 | 2021-05-03 |  | 100% |  | Greg |
| 206 | 1.3.3.3.4.5.10 | Validate interrupts | 1d? | 2021-05-03 | 2021-05-03 |  | 100% |  | Greg |
| 207 | 1.3.3.3.4.5.11 | Validate all memory | 1d? | 2021-05-03 | 2021-05-03 |  | 100% |  | Greg |
| 208 | 1.3.3.3.4.5.12 | Validate boot | 1d? | 2021-05-03 | 2021-05-03 |  | 100% |  | Greg |
| 209 | 1.3.3.3.4.5.13 | Validate debug access | 1d? | 2021-05-03 | 2021-05-03 |  | 100% |  | Greg |
| 210 | 1.3.3.3.4.5.14 | Validate Clocks | 1d? | 2021-05-03 | 2021-05-03 |  | 100% |  | Greg |
| 211 | 1.3.3.3.5 | **Backend Design Update** | 2d? | 2021-05-04 | 2021-05-05 |  |  |  |  |
| 212 | 1.3.3.3.5.1 | RC Backend feedback update | 1d? | 2021-05-05 | 2021-05-05 | 216 |  |  |  |
| 213 | 1.3.3.3.5.2 | Silver Backend feedback update | 1d? | 2021-05-04 | 2021-05-04 | 217 |  |  |  |
| 214 | 1.3.3.4 | **SoC RTL Milestones** | 2d? | 2021-05-03 | 2021-05-04 |  |  |  |  |
| 215 | 1.3.3.4.1 | Milestone 1 - Golden RTL for emulation | 1d? | 2021-05-03 | 2021-05-03 |  |  |  |  |
| 216 | 1.3.3.4.2 | Milestone 2 - RC for backend release | 1d? | 2021-05-04 | 2021-05-04 | 50, 108 |  |  |  |
| 217 | 1.3.3.4.3 | Milestone 3 - Silver for backend release | 1d? | 2021-05-03 | 2021-05-03 |  |  |  |  |
| 218 | 1.3.3.4.4 | Milestone 4 - Golden for backend release | 1d? | 2021-05-03 | 2021-05-03 |  |  |  |  |
| 219 | 1.3.4 | RTL Freeze/Golden RTL | 20d | 2021-05-03 | 2021-05-28 |  |  | start no earlier than 2021-05-03 | Greg |
| 220 | 1.3.5 | Do synthesis | 30d | 2021-05-03 | 2021-06-11 |  |  | start no earlier than 2021-04-12 | Tim |
| 221 | 1.3.6 | Complete synthesis/Golden netlist | 0d | 2021-07-05 | 2021-07-05 |  |  | start no earlier than 2021-07-05 | Tim |

Notes:
- 197: v
- 198: v
- 199: v
- 200: v
- 201: v
- 202: 50%
- 203: v
- 204: v
- 205: v
- 206: v
- 207: v
- 208: v
- 209: v
- 210: v
- 212: backend
- 213: backend
- 215: early Sept
- 216: later Sept
- 217: Tim
- 218: Tim
- 219: QuickLogic
- 220: QuickLogic
- 221: Quicklogic

| ID | WBS | Task | Duration | Start | Finish | Constraint | Resources |
| --- | --- | --- | --- | --- | --- | --- | --- |
| 222 | 1.4 | **SoC BackEnd design** | 60d | 2021-07-05 | 2021-09-24 |  |  |
| 223 | 1.4.1 | Start place and route | 1d | 2021-07-05 | 2021-07-05 | start no earlier than 2021-07-05 | CMC |
| 224 | 1.4.2 | GDS Freeze checklist | 5d | 2021-07-05 | 2021-07-09 | start no earlier than 2021-07-05 | CMC |
| 225 | 1.4.3 | Complete place and route, GDS | 60d | 2021-07-05 | 2021-09-24 | start no earlier than 2021-07-05 | CMC |
| 226 | 1.4.4 | Design submission (MPW2243, est. delivery date 2022-03-31) | 1d | 2021-09-06 | 2021-09-06 | start no earlier than 2021-09-06 | CMC |
| 227 | 1.5 | **SoC Packaging and Test** | 1d? | 2021-04-12 | 2021-04-12 |  |  |
| 228 | 1.5.1 | Production test plan (IC) | 1d? | 2021-04-12 | 2021-04-12 |  | Anthony |
| 229 | 1.5.2 | Packaging plan - low volume, ~50 I/Os, wire-bonding | 1d? | 2021-04-12 | 2021-04-12 |  | Tuan |
| 230 | 1.5.3 | Chip packaging | 1d? | 2021-04-12 | 2021-04-12 |  | CMC |
| 231 | 1.5.4 | Chip/packaging test | 1d? | 2021-04-12 | 2021-04-12 |  | Tuan |
| 232 | 1.6 | **Bench PCB Design and Manufacture** | 1d? | 2021-04-12 | 2021-04-12 |  |  |
| 233 | 1.6.1 | PCB Specification | 1d? | 2021-04-12 | 2021-04-12 |  | Anthony |
| 234 | 1.6.2 | PCB Design | 1d? | 2021-04-12 | 2021-04-12 |  | Anthony |
| 235 | 1.6.3 | PCB manufacturing and assembly | 1d? | 2021-04-12 | 2021-04-12 |  | Anthony |
| 236 | 1.6.4 | Initial bringup PCB testing | 1d? | 2021-04-12 | 2021-04-12 |  | Anthony |
| 238 | 1.7 | **DVK PCB Design and Manufacture** | 1d? | 2021-04-12 | 2021-04-12 |  |  |
| 239 | 1.7.1 | PCB Specification | 1d? | 2021-04-12 | 2021-04-12 |  | Anthony |
| 240 | 1.7.2 | PCB Design | 1d? | 2021-04-12 | 2021-04-12 |  | Anthony |
| 241 | 1.7.3 | PCB manufacturing and assembly | 1d? | 2021-04-12 | 2021-04-12 |  | Anthony |
| 242 | 1.7.4 | Initial bringup PCB testing | 1d? | 2021-04-12 | 2021-04-12 |  | Anthony |

Notes:
- 223: CMC
- 224: CMC
- 225: CMC
- 226: CMC
- 228: Anthony, James
- 229: Anthony, CMC, Florian
- 230: CMC
- 231: Anthony, James
- 233: Anthony, James
- 234: Anthony, James
- 235: Anthony, James
- 236: Anthony, James
