# RapidSilicon

Schedule from ProjectLibre, 2021-04-12 to 2022-05-03.

## Calendars

- Standard: Mon-Fri 08:00-12:00, 13:00-17:00; Sat-Sun off.

## Resources

| Resource |
| --- |
| Unassigned |
| Anthony |
| Tuan |
| Greg |
| Tim |
| QuickLogic |
| CMC |
| Hugh |
| Duncan |
| James |
| Florian |
| Rick |
| Randy |
| Somesh |

## Schedule

| ID | WBS | Task | Duration | Start | Finish | Predecessors | Complete | Constraint | Resources |
| --- | --- | --- | --- | --- | --- | --- | --- | --- | --- |
| 1 | 1 | **Core-V-MCU-SoC (Arnold2)** | 276.5d? | 2021-04-12 | 2022-05-03 |  | 35% |  |  |
| 2 | 1.1 | **Documentation and Gate Review** | 276.5d? | 2021-04-12 | 2022-05-03 |  | 9% |  |  |
| 3 | 1.1.1 | Update PL document | 1d | 2021-04-12 | 2021-05-03 |  | 100% |  | Duncan; Hugh; Tim |
| 4 | 1.1.2 | Complete Project plan document/spreadsheet | 1d? | 2021-04-12 | 2021-05-03 |  | 100% |  | Duncan; Hugh; Tim |
| 5 | 1.1.3 | SoC specification | 2d | 2021-09-28 | 2021-09-29 |  |  | start no earlier than 2021-09-28 | Greg |
| 6 | 1.1.4 | User Manual (ReadTheDocs) | 1d? | 2022-02-16 | 2022-02-17 | 228 |  |  | QuickLogic |
| 7 | 1.1.5 | Datasheet include operating conditions, AC/DC parameters, basic timing information | 1d? | 2022-05-02 | 2022-05-03 | 240 |  | start no earlier than 2021-09-06 | Tuan |
| 8 | 1.1.6 | "Whole Product Test" spec (SoC/s/w testing - preRTOS, FreeRTOS) | 3d? | 2021-09-22 | 2021-09-24 |  |  | start no earlier than 2021-09-22 | Anthony; Greg |
| 9 | 1.1.7 | Development kit specification | 2d? | 2021-10-04 | 2021-10-05 |  |  | start no earlier than 2021-10-04 | Anthony |
| 10 | 1.1.8 | Development kit user guide | 7d? | 2021-10-06 | 2021-10-14 | 9 |  |  | Anthony |
| 11 | 1.1.9 | Development kit examples/demos (To be moved to DVK group) | 1d? | 2021-05-03 | 2021-05-03 |  |  |  |  |
| 12 | 1.1.10 | Characterization plan (testing operation of the first received board and chip)_ | 3d? | 2021-05-03 | 2021-05-05 |  |  |  | Anthony |
| 13 | 1.2 | **Project Setup** | 16d? | 2021-04-12 | 2021-05-03 |  | 50% |  |  |
| 14 | 1.2.1 | Merge Quicklogic/OpenHW Repo | 1d? | 2021-04-12 | 2021-05-03 |  | 100% |  | Florian; Greg; Tim |
| 15 | 1.2.2 | Repo review, license review for CQ | 0.5d? | 2021-05-03 | 2021-05-03 |  |  | start no earlier than 2021-05-03 | Duncan; Florian |
| 16 | 1.3 | **SoC Front End Design** | 192.46d? | 2021-05-03 | 2022-01-26 |  | 62% |  |  |
| 17 | 1.3.1 | Identify/procure the PLL source | 5d | 2021-09-20 | 2021-09-24 |  | 100% | start no earlier than 2021-09-20 | Tim |
| 18 | 1.3.2 | Design verification plan, including bare-metal for verification | 2d | 2021-05-03 | 2021-05-04 |  |  | start no earlier than 2021-05-03 | Greg |
| 19 | 1.3.3 | **Design Completion** | 85.46d? | 2021-09-29 | 2022-01-26 |  | 49% |  |  |
| 20 | 1.3.3.1 | PLL connected | 1d | 2021-09-29 | 2021-09-29 | 17 |  |  | Greg |
| 21 | 1.3.3.2 | eFPGA test mode | 1d? | 2021-09-29 | 2021-09-30 | 26 |  |  | Randy |
| 22 | 1.3.3.3 | Resolve IO details such as POWEROK signal | 1d | 2021-09-30 | 2021-09-30 | 20 | 100% |  | Greg |
| 23 | 1.3.3.4 | Triage error/warning messages | 1d | 2021-09-29 | 2021-09-29 | 21 | 95% | start no earlier than 2021-09-29 | Greg |
| 24 | 1.3.3.5 | SDC time constraints | 1d | 2021-10-01 | 2021-10-01 | 22 | 100% | start no earlier than 2021-09-30 | Greg |
| 25 | 1.3.3.6 | Resolve blackboxes such as register files | 1d? | 2021-09-30 | 2021-09-30 | 23 | 100% |  | Greg |
| 26 | 1.3.3.7 | Run all verification test on post synthesis | 0.33d? | 2021-09-29 | 2021-09-29 |  |  |  | Greg; Randy; Somesh |
| 27 | 1.3.3.8 | Run all verification test on post P&R netlist | 0.33d? | 2022-01-26 | 2022-01-26 | 232 |  |  | Greg; Randy; Somesh |
| 28 | 1.3.3.9 | RTL Handoff | 0d | 2021-11-15 | 2021-11-15 |  |  | start no earlier than 2021-11-15 |  |

Notes:
- 1: Original
- 2: Assigned to
- 3: Hugh, Tim, Duncan
- 4: Hugh, Tim, Duncan
- 6: Existed, to be published
- 14: Tim, Florian, Greg
- 15: Duncan, Florian
- 17: Complete
- 18: no documentation of verification plan. Spreadsheet available, should be published in the repo (CORE-V MCU). Jasper and Greg working on the spreadsheet
- 19: take cv32e40p checklist as prototype - book meeting to review
- 20: CV32E40P is failing, PLL is pending
- 21: resolved
- 22: complete; test transmission to CMC this week
- 23: 95% complete
- 24: done but needs to continue to be checked
- 25: Complete
- 26: CV32E40P is failing, PLL is pending
- 28: Hugh helping with FTP site. CMC not planning to get fully started until mid November. But plan to get initial versions over to CMC by date on left

| ID | WBS | Task | Duration | Start | Finish | Complete | Constraint | Resources |
| --- | --- | --- | --- | --- | --- | --- | --- | --- |
| 29 | 1.3.4 | **RTL Checklist** | 3d? | 2021-05-03 | 2021-05-05 | 81% | start no earlier than 2021-05-03 |  |
| 30 | 1.3.4.1 | **Documentation** | 1d? | 2021-05-03 | 2021-05-03 | 68% |  |  |
| 31 | 1.3.4.1.1 | Simple Block Diagram | 1d? | 2021-05-03 | 2021-05-03 | 100% |  | Greg |
| 32 | 1.3.4.1.2 | System Addresses Mapping | 1d? | 2021-05-03 | 2021-05-03 | 100% |  | Greg |
| 33 | 1.3.4.1.3 | System Test & Test Modes | 1d? | 2021-05-03 | 2021-05-03 |  |  |  |
| 34 | 1.3.4.1.4 | Power Management | 1d? | 2021-05-03 | 2021-05-03 |  |  |  |
| 35 | 1.3.4.1.5 | System Clocks | 1d? | 2021-05-03 | 2021-05-03 | 75% |  | Greg |
| 36 | 1.3.4.1.6 | System Reset | 1d? | 2021-05-03 | 2021-05-03 | 100% |  | Greg |
| 37 | 1.3.4.1.7 | System programming & Update | 1d? | 2021-05-03 | 2021-05-03 | 100% |  | Greg |
| 38 | 1.3.4.2 | **Modules & Regs Description** | 1d? | 2021-05-03 | 2021-05-03 | 75% |  |  |
| 39 | 1.3.4.2.1 | **Non UDMA** | 1d? | 2021-05-03 | 2021-05-03 | 67% |  |  |
| 40 | 1.3.4.2.1.1 | FLL | 1d? | 2021-05-03 | 2021-05-03 |  |  |  |
| 41 | 1.3.4.2.1.2 | eFPGA | 1d? | 2021-05-03 | 2021-05-03 |  |  |  |
| 42 | 1.3.4.2.1.3 | I2Cslave | 1d? | 2021-05-03 | 2021-05-03 | 100% |  | Greg |
| 43 | 1.3.4.2.1.4 | Timers | 1d? | 2021-05-03 | 2021-05-03 | 100% |  | Greg |
| 44 | 1.3.4.2.1.5 | Interrupt Controller | 1d? | 2021-05-03 | 2021-05-03 | 100% |  | Greg |
| 45 | 1.3.4.2.1.6 | Boot ROM | 1d? | 2021-05-03 | 2021-05-03 | 100% |  | Greg |
| 46 | 1.3.4.2.1.7 | FCB | 1d? | 2021-05-03 | 2021-05-03 | 100% |  | Greg |
| 47 | 1.3.4.2.1.8 | GPIO | 1d? | 2021-05-03 | 2021-05-03 | 100% |  | Greg |
| 48 | 1.3.4.2.1.9 | Other stuff | 1d? | 2021-05-03 | 2021-05-03 |  |  |  |
| 49 | 1.3.4.2.2 | **UDMA** | 1d? | 2021-05-03 | 2021-05-03 | 83% |  |  |
| 50 | 1.3.4.2.2.1 | UART | 1d? | 2021-05-03 | 2021-05-03 | 100% |  | Greg |
| 51 | 1.3.4.2.2.2 | I2C master | 1d? | 2021-05-03 | 2021-05-03 | 100% |  | Greg |
| 52 | 1.3.4.2.2.3 | QSPI master | 1d? | 2021-05-03 | 2021-05-03 | 100% |  | Greg |
| 53 | 1.3.4.2.2.4 | CAM | 1d? | 2021-05-03 | 2021-05-03 | 50% |  | Greg |
| 54 | 1.3.4.2.2.5 | SDIO | 1d? | 2021-05-03 | 2021-05-03 | 100% |  | Greg |
| 55 | 1.3.4.2.2.6 | Debug I/F | 1d? | 2021-05-03 | 2021-05-03 | 100% |  | Greg |
| 56 | 1.3.4.2.2.7 | PLL modules | 1d? | 2021-05-03 | 2021-05-03 |  |  |  |
| 57 | 1.3.4.2.2.8 | eFPGA | 1d? | 2021-05-03 | 2021-05-03 | 100% |  | Greg |
| 58 | 1.3.4.2.2.9 | Math Blocks | 1d? | 2021-05-03 | 2021-05-03 | 100% |  | Greg |
| 59 | 1.3.4.2.2.10 | Device IO | 1d? | 2021-05-03 | 2021-05-03 | 80% |  | Greg |

Notes:
- 31: v
- 32: v
- 35: 75%
- 36: v
- 37: efpga FCB v
- 40: PLL
- 42: v
- 43: v
- 44: v
- 45: v
- 46: v
- 47: v
- 50: v
- 51: v
- 52: v
- 53: 50%
- 54: v
- 55: v
- 56: Tim
- 57: V
- 58: V
- 59: 80%

| ID | WBS | Task | Duration | Start | Finish | Complete | Resources |
| --- | --- | --- | --- | --- | --- | --- | --- |
| 60 | 1.3.4.3 | **Designs** | 3d? | 2021-05-03 | 2021-05-05 | 85% |  |
| 61 | 1.3.4.3.1 | **RTL** | 1d? | 2021-05-03 | 2021-05-03 | 86% |  |
| 62 | 1.3.4.3.1.1 | Top module | 1d? | 2021-05-03 | 2021-05-03 | 100% | Greg |
| 63 | 1.3.4.3.1.2 | **Non UDMA** | 1d? | 2021-05-03 | 2021-05-03 | 100% |  |
| 64 | 1.3.4.3.1.2.1 | FLL (Xilinx for Emulation) | 1d? | 2021-05-03 | 2021-05-03 | 100% | Greg |
| 65 | 1.3.4.3.1.2.2 | PLL (SoC target) | 1d? | 2021-05-03 | 2021-05-03 | 100% | Greg |
| 66 | 1.3.4.3.1.2.3 | eFPGA | 1d? | 2021-05-03 | 2021-05-03 | 100% | Greg |
| 67 | 1.3.4.3.1.2.4 | I2Cslave | 1d? | 2021-05-03 | 2021-05-03 | 100% | Greg |
| 68 | 1.3.4.3.1.2.5 | Timers | 1d? | 2021-05-03 | 2021-05-03 | 100% | Greg |
| 69 | 1.3.4.3.1.2.6 | Interrupt Controller | 1d? | 2021-05-03 | 2021-05-03 | 100% | Greg |
| 70 | 1.3.4.3.1.2.7 | Boot ROM | 1d? | 2021-05-03 | 2021-05-03 | 100% | Greg |
| 71 | 1.3.4.3.1.2.8 | FCB | 1d? | 2021-05-03 | 2021-05-03 | 100% | Greg |
| 72 | 1.3.4.3.1.2.9 | GPIO | 1d? | 2021-05-03 | 2021-05-03 | 100% | Greg |
| 73 | 1.3.4.3.1.2.10 | Other stuff | 1d? | 2021-05-03 | 2021-05-03 | 100% | Greg |
| 74 | 1.3.4.3.1.3 | **UDMA** | 1d? | 2021-05-03 | 2021-05-03 | 73% |  |
| 75 | 1.3.4.3.1.3.1 | UART | 1d? | 2021-05-03 | 2021-05-03 | 100% | Greg |
| 76 | 1.3.4.3.1.3.2 | I2C master | 1d? | 2021-05-03 | 2021-05-03 | 100% | Greg |
| 77 | 1.3.4.3.1.3.3 | QSPI master | 1d? | 2021-05-03 | 2021-05-03 | 100% | Greg |
| 78 | 1.3.4.3.1.3.4 | CAM | 1d? | 2021-05-03 | 2021-05-03 | 50% | Greg |
| 79 | 1.3.4.3.1.3.5 | SDIO | 1d? | 2021-05-03 | 2021-05-03 | 90% | Greg |
| 80 | 1.3.4.3.1.3.6 | Debug I/F | 1d? | 2021-05-03 | 2021-05-03 |  |  |
| 81 | 1.3.4.3.1.4 | **eFPGA** | 1d? | 2021-05-03 | 2021-05-03 | 100% |  |
| 82 | 1.3.4.3.1.4.1 | Get VQ file running | 1d? | 2021-05-03 | 2021-05-03 | 100% | Greg |
| 83 | 1.3.4.3.1.4.2 | Test VQ | 1d? | 2021-05-03 | 2021-05-03 | 100% | Greg |
| 84 | 1.3.4.3.1.4.3 | Integrate FCB | 1d? | 2021-05-03 | 2021-05-03 | 100% | Greg |
| 85 | 1.3.4.3.1.4.4 | Validate FCB | 1d? | 2021-05-03 | 2021-05-03 | 100% | Greg |
| 86 | 1.3.4.3.1.4.5 | Integrate APB | 1d? | 2021-05-03 | 2021-05-03 | 100% | Greg |
| 87 | 1.3.4.3.1.4.6 | Validate APB | 1d? | 2021-05-03 | 2021-05-03 | 100% | Greg |
| 88 | 1.3.4.3.1.4.7 | Integrate TCDM | 1d? | 2021-05-03 | 2021-05-03 | 100% | Greg |
| 89 | 1.3.4.3.1.4.8 | Validate TCDM | 1d? | 2021-05-03 | 2021-05-03 | 100% | Greg |
| 90 | 1.3.4.3.1.4.9 | Integrate Event pins | 1d? | 2021-05-03 | 2021-05-03 | 100% | Greg |
| 91 | 1.3.4.3.1.4.10 | Validate Event pins | 1d? | 2021-05-03 | 2021-05-03 | 100% | Greg |

Notes:
- 62: V
- 64: v
- 65: v
- 66: v
- 67: v
- 68: v
- 69: v
- 70: v
- 71: v
- 72: v
- 73: v
- 75: v
- 76: v
- 77: v
- 78: 50%
- 82: 70%
- 84: v
- 85: v
- 86: v
- 87: v
- 88: v
- 89: v
- 90: v
- 91: v

| ID | WBS | Task | Duration | Start | Finish | Complete | Resources |
| --- | --- | --- | --- | --- | --- | --- | --- |
| 92 | 1.3.4.3.1.5 | **Math Blocks** | 1d? | 2021-05-03 | 2021-05-03 | 100% |  |
| 93 | 1.3.4.3.1.5.1 | 4-bit mode | 1d? | 2021-05-03 | 2021-05-03 | 100% | Greg |
| 94 | 1.3.4.3.1.5.2 | Lengthed accumulator | 1d? | 2021-05-03 | 2021-05-03 | 100% | Greg |
| 95 | 1.3.4.3.1.5.3 | Memory block sharing (3 per 2) | 1d? | 2021-05-03 | 2021-05-03 | 100% | Greg |
| 96 | 1.3.4.3.1.5.4 | Integrate 4 math blocks | 1d? | 2021-05-03 | 2021-05-03 | 100% | Greg |
| 97 | 1.3.4.3.1.5.5 | Validate math blocks | 1d? | 2021-05-03 | 2021-05-03 | 100% | Greg |
| 98 | 1.3.4.3.1.5.6 | Integrate eFPGA IO | 1d? | 2021-05-03 | 2021-05-03 | 100% | Greg |
| 99 | 1.3.4.3.1.5.7 | Validate eFPGA IO | 1d? | 2021-05-03 | 2021-05-03 | 100% | Greg |
| 100 | 1.3.4.3.1.6 | **IO** | 1d? | 2021-05-03 | 2021-05-03 | 75% |  |
| 101 | 1.3.4.3.1.6.1 | Define VDDIO scheme | 1d? | 2021-05-03 | 2021-05-03 | 100% | Greg |
| 102 | 1.3.4.3.1.6.2 | Define physical I/O ring | 1d? | 2021-05-03 | 2021-05-03 |  | CMC |
| 103 | 1.3.4.3.1.6.3 | Finalize pin-table | 1d? | 2021-05-03 | 2021-05-03 | 100% | Greg |
| 104 | 1.3.4.3.1.6.4 | Integrate IO ring | 1d? | 2021-05-03 | 2021-05-03 | 100% | Greg |
| 105 | 1.3.4.3.1.7 | **I2C Slave** | 1d? | 2021-05-03 | 2021-05-03 | 100% |  |
| 106 | 1.3.4.3.1.7.1 | Create RTL | 1d? | 2021-05-03 | 2021-05-03 | 100% | Greg |
| 107 | 1.3.4.3.1.7.2 | Integrate I2C Slave | 1d? | 2021-05-03 | 2021-05-03 | 100% | Greg |
| 108 | 1.3.4.3.1.8 | **Power Management** | 1d? | 2021-05-03 | 2021-05-03 | 100% |  |
| 109 | 1.3.4.3.1.8.1 | Decide on LDO | 1d? | 2021-05-03 | 2021-05-03 | 100% |  |
| 110 | 1.3.4.3.1.8.2 | Source LDO | 1d? | 2021-05-03 | 2021-05-03 | 100% |  |
| 111 | 1.3.4.3.1.8.3 | Integrate | 1d? | 2021-05-03 | 2021-05-03 | 100% |  |
| 112 | 1.3.4.3.1.9 | **Test Logics** | 1d? | 2021-05-03 | 2021-05-03 |  |  |
| 113 | 1.3.4.3.1.9.1 | Logic test | 1d? | 2021-05-03 | 2021-05-03 |  |  |
| 114 | 1.3.4.3.1.9.2 | EFPGA test | 1d? | 2021-05-03 | 2021-05-03 |  | Randy |
| 115 | 1.3.4.3.1.9.3 | Memory test | 1d? | 2021-05-03 | 2021-05-03 |  |  |
| 116 | 1.3.4.3.1.9.4 | FLL test | 1d? | 2021-05-03 | 2021-05-03 |  |  |

Notes:
- 93: v
- 94: v
- 95: v
- 96: v
- 97: v
- 98: v
- 99: v
- 104: Global
- 106: v
- 107: v
- 109: No LDO
- 114: Randy

| ID | WBS | Task | Duration | Start | Finish | Complete | Resources |
| --- | --- | --- | --- | --- | --- | --- | --- |
| 117 | 1.3.4.3.2 | **RTL Verification** | 1d? | 2021-05-03 | 2021-05-03 | 80% |  |
| 118 | 1.3.4.3.2.1 | **Setup Verification Environment** | 1d? | 2021-05-03 | 2021-05-03 | 85% |  |
| 119 | 1.3.4.3.2.1.1 | Tools decision | 1d? | 2021-05-03 | 2021-05-03 | 100% | Greg |
| 120 | 1.3.4.3.2.1.2 | TestBench Development | 1d? | 2021-05-03 | 2021-05-03 | 100% | Greg |
| 121 | 1.3.4.3.2.1.3 | **Collect/Create Peripherals (VPI)** | 1d? | 2021-05-03 | 2021-05-03 | 77% |  |
| 122 | 1.3.4.3.2.1.3.1 | SPI Flash | 1d? | 2021-05-03 | 2021-05-03 | 100% | Greg |
| 123 | 1.3.4.3.2.1.3.2 | I2C Slave device | 1d? | 2021-05-03 | 2021-05-03 | 100% | Greg |
| 124 | 1.3.4.3.2.1.3.3 | I2C Master device | 1d? | 2021-05-03 | 2021-05-03 | 100% | Greg |
| 125 | 1.3.4.3.2.1.3.4 | CAM device IP | 1d? | 2021-05-03 | 2021-05-03 | 50% | Greg |
| 126 | 1.3.4.3.2.1.3.5 | SDIO | 1d? | 2021-05-03 | 2021-05-03 | 90% |  |
| 127 | 1.3.4.3.2.1.3.6 | UART IP | 1d? | 2021-05-03 | 2021-05-03 | 100% | Greg |
| 128 | 1.3.4.3.2.1.3.7 | PLL | 1d? | 2021-05-03 | 2021-05-03 |  |  |
| 129 | 1.3.4.3.2.1.4 | **Collect/Create Behavioral models for Hard IPs** | 1d? | 2021-05-03 | 2021-05-03 | 80% |  |
| 130 | 1.3.4.3.2.1.4.1 | ROM | 1d? | 2021-05-03 | 2021-05-03 | 100% |  |
| 131 | 1.3.4.3.2.1.4.2 | L2 RAM | 1d? | 2021-05-03 | 2021-05-03 | 100% |  |
| 132 | 1.3.4.3.2.1.4.3 | Inferred RAM I2C M | 1d? | 2021-05-03 | 2021-05-03 | 100% |  |
| 133 | 1.3.4.3.2.1.4.4 | Math Block Register File | 1d? | 2021-05-03 | 2021-05-03 | 100% |  |
| 134 | 1.3.4.3.2.1.4.5 | Others | 1d? | 2021-05-03 | 2021-05-03 |  |  |
| 135 | 1.3.4.3.2.1.5 | Instantiate periphrals | 1d? | 2021-05-03 | 2021-05-03 | 100% | Greg |
| 136 | 1.3.4.3.2.1.6 | Create test-cases top level | 1d? | 2021-05-03 | 2021-05-03 | 100% | Greg |
| 137 | 1.3.4.3.2.1.7 | Instantiate SoC RTL | 1d? | 2021-05-03 | 2021-05-03 | 100% | Greg |
| 138 | 1.3.4.3.2.2 | CORE-V-MCU Block | 1d? | 2021-05-03 | 2021-05-03 |  |  |
| 139 | 1.3.4.3.2.3 | **APB** | 1d? | 2021-05-03 | 2021-05-03 | 92% |  |
| 140 | 1.3.4.3.2.3.1 | PLL | 1d? | 2021-05-03 | 2021-05-03 |  |  |
| 141 | 1.3.4.3.2.3.2 | I2Cslave | 1d? | 2021-05-03 | 2021-05-03 | 100% | Greg |
| 142 | 1.3.4.3.2.3.3 | Timers | 1d? | 2021-05-03 | 2021-05-03 | 100% | Greg |

Notes:
- 119: v
- 120: v
- 122: UR
- 123: v
- 124: v
- 125: 50%
- 127: v
- 130: Global
- 135: v
- 136: v
- 137: v
- 141: v
- 142: v

| ID | WBS | Task | Duration | Start | Finish | Complete | Resources |
| --- | --- | --- | --- | --- | --- | --- | --- |
| 143 | 1.3.4.3.2.3.4 | **Interrupt Controller** | 1d? | 2021-05-03 | 2021-05-03 | 100% |  |
| 144 | 1.3.4.3.2.3.4.1 | Event Pins | 1d? | 2021-05-03 | 2021-05-03 | 100% | Greg |
| 145 | 1.3.4.3.2.3.4.2 | Fast IRQ | 1d? | 2021-05-03 | 2021-05-03 | 100% | Greg |
| 146 | 1.3.4.3.2.3.4.3 | GPIO | 1d? | 2021-05-03 | 2021-05-03 | 100% | Greg |
| 147 | 1.3.4.3.2.3.5 | **SoC Control** | 1d? | 2021-05-03 | 2021-05-03 | 99% |  |
| 148 | 1.3.4.3.2.3.5.1 | Pin Mux | 1d? | 2021-05-03 | 2021-05-03 | 100% | Greg |
| 149 | 1.3.4.3.2.3.5.2 | PAD Config | 1d? | 2021-05-03 | 2021-05-03 | 100% | Greg |
| 150 | 1.3.4.3.2.3.5.3 | WatchDog Timer | 1d? | 2021-05-03 | 2021-05-03 | 100% | Greg |
| 151 | 1.3.4.3.2.3.5.4 | Ready Timer | 1d? | 2021-05-03 | 2021-05-03 | 100% | Greg |
| 152 | 1.3.4.3.2.3.5.5 | Soft Reset Circuits | 1d? | 2021-05-03 | 2021-05-03 | 100% | Greg |
| 153 | 1.3.4.3.2.3.5.6 | Boot Select Status | 1d? | 2021-05-03 | 2021-05-03 | 100% | Greg |
| 154 | 1.3.4.3.2.3.5.7 | Boot ROM | 1d? | 2021-05-03 | 2021-05-03 | 90% | Greg |
| 155 | 1.3.4.3.2.4 | **UDMA** | 1d? | 2021-05-03 | 2021-05-03 | 90% |  |
| 156 | 1.3.4.3.2.4.1 | UART | 1d? | 2021-05-03 | 2021-05-03 | 100% | Greg |
| 157 | 1.3.4.3.2.4.2 | I2C master | 1d? | 2021-05-03 | 2021-05-03 | 100% | Greg |
| 158 | 1.3.4.3.2.4.3 | QSPI master | 1d? | 2021-05-03 | 2021-05-03 | 100% | Greg |
| 159 | 1.3.4.3.2.4.4 | CAM | 1d? | 2021-05-03 | 2021-05-03 | 50% | Greg |
| 160 | 1.3.4.3.2.4.5 | Debug I/F (emulation) | 1d? | 2021-05-03 | 2021-05-03 | 100% | Greg |
| 161 | 1.3.4.3.2.5 | **eFPGA** | 1d? | 2021-05-03 | 2021-05-03 | 100% |  |
| 162 | 1.3.4.3.2.5.1 | FCB | 1d? | 2021-05-03 | 2021-05-03 | 100% | Greg |
| 163 | 1.3.4.3.2.5.2 | IO Ring | 1d? | 2021-05-03 | 2021-05-03 | 100% | Greg |
| 164 | 1.3.4.3.2.5.3 | ASSP interface | 1d? | 2021-05-03 | 2021-05-03 | 100% | Greg |
| 165 | 1.3.4.3.2.5.4 | Math Blocks | 1d? | 2021-05-03 | 2021-05-03 | 100% | Greg |
| 166 | 1.3.4.3.2.5.5 | TCDM | 1d? | 2021-05-03 | 2021-05-03 | 100% | Greg |
| 167 | 1.3.4.3.2.6 | APB | 1d? | 2021-05-03 | 2021-05-03 | 100% | Greg |

Notes:
- 144: v
- 145: v
- 146: v
- 148: v
- 149: IO ring
- 150: 90%
- 151: v
- 152: v
- 153: v
- 154: 90%
- 156: v
- 157: v
- 158: v
- 159: 50%
- 162: v
- 163: v
- 164: v
- 165: v
- 166: v
- 167: v

| ID | WBS | Task | Duration | Start | Finish | Complete | Resources |
| --- | --- | --- | --- | --- | --- | --- | --- |
| 168 | 1.3.4.3.2.7 | **Test Logics** | 1d? | 2021-05-03 | 2021-05-03 |  |  |
| 169 | 1.3.4.3.2.7.1 | Logic test | 1d? | 2021-05-03 | 2021-05-03 |  | CMC |
| 170 | 1.3.4.3.2.7.2 | EFPGA test | 1d? | 2021-05-03 | 2021-05-03 |  | Randy |
| 171 | 1.3.4.3.2.7.3 | Memory test | 1d? | 2021-05-03 | 2021-05-03 |  | CMC |
| 172 | 1.3.4.3.2.7.4 | FLL test | 1d? | 2021-05-03 | 2021-05-03 |  | CMC |
| 173 | 1.3.4.3.3 | **Design Compiler Synthesis** | 1d? | 2021-05-03 | 2021-05-03 | 98% |  |
| 174 | 1.3.4.3.3.1 | **Constraints Setup** | 1d? | 2021-05-03 | 2021-05-03 | 100% |  |
| 175 | 1.3.4.3.3.1.1 | Get Synthesis Silicon Constraints | 1d? | 2021-05-03 | 2021-05-03 | 100% | Greg |
| 176 | 1.3.4.3.3.1.2 | Define System Clock Constraints | 1d? | 2021-05-03 | 2021-05-03 | 100% | Greg |
| 177 | 1.3.4.3.3.1.3 | Get Test Synthesis Constraints | 1d? | 2021-05-03 | 2021-05-03 | 100% | Greg |
| 178 | 1.3.4.3.3.2 | Implement synthesis scripts | 1d? | 2021-05-03 | 2021-05-03 | 100% | Greg |
| 179 | 1.3.4.3.3.3 | Execute Synthesis and Fix errors | 1d? | 2021-05-03 | 2021-05-03 | 90% | Greg |
| 180 | 1.3.4.3.4 | **Emulation Validation - Nexys A7** | 1d? | 2021-05-03 | 2021-05-03 | 94% |  |
| 181 | 1.3.4.3.4.1 | Define Emulation system & Peripherals | 1d? | 2021-05-03 | 2021-05-03 | 100% | Greg |
| 182 | 1.3.4.3.4.2 | Implement Nightly Build scripts | 1d? | 2021-05-03 | 2021-05-03 | 100% | Greg |
| 183 | 1.3.4.3.4.3 | Implement Emulation Build scripts | 1d? | 2021-05-03 | 2021-05-03 | 100% | Greg |
| 184 | 1.3.4.3.4.4 | **Develop Test SW for emulkation** | 1d? | 2021-05-03 | 2021-05-03 | 91% |  |
| 185 | 1.3.4.3.4.4.1 | CLI Framework | 1d? | 2021-05-03 | 2021-05-03 | 100% | Greg |
| 186 | 1.3.4.3.4.4.2 | Add I2Cmaster tests | 1d? | 2021-05-03 | 2021-05-03 | 100% | Greg |
| 187 | 1.3.4.3.4.4.3 | Add UART tests | 1d? | 2021-05-03 | 2021-05-03 | 100% | Greg |
| 188 | 1.3.4.3.4.4.4 | Add QSPImaster tests | 1d? | 2021-05-03 | 2021-05-03 | 100% | Greg |
| 189 | 1.3.4.3.4.4.5 | Add Camera Tests | 1d? | 2021-05-03 | 2021-05-03 | 50% | Greg |
| 190 | 1.3.4.3.4.4.6 | Add IO tests | 1d? | 2021-05-03 | 2021-05-03 | 100% | Greg |
| 191 | 1.3.4.3.4.4.7 | Add MathBlocks tests | 1d? | 2021-05-03 | 2021-05-03 | 100% | Greg |
| 192 | 1.3.4.3.4.4.8 | Add System memory tests | 1d? | 2021-05-03 | 2021-05-03 | 100% | Greg |
| 193 | 1.3.4.3.4.4.9 | Add BootLoader | 1d? | 2021-05-03 | 2021-05-03 | 100% | Greg |
| 194 | 1.3.4.3.4.4.10 | Add TCDM tests | 1d? | 2021-05-03 | 2021-05-03 | 100% | Greg |
| 195 | 1.3.4.3.4.4.11 | Add UDMA tests | 1d? | 2021-05-03 | 2021-05-03 | 100% | Greg |
| 196 | 1.3.4.3.4.4.12 | Add I2Cslave tests | 1d? | 2021-05-03 | 2021-05-03 | 100% | Greg |
| 197 | 1.3.4.3.4.4.13 | Add Camera interface tests | 1d? | 2021-05-03 | 2021-05-03 | 100% | Greg |
| 198 | 1.3.4.3.4.4.14 | Add test Logic tests | 1d? | 2021-05-03 | 2021-05-03 |  |  |
| 199 | 1.3.4.3.4.4.15 | Add FPGA FCB tests | 1d? | 2021-05-03 | 2021-05-03 | 100% | Greg |
| 200 | 1.3.4.3.4.4.16 | Add FPGA IO tests | 1d? | 2021-05-03 | 2021-05-03 | 100% | Greg |
| 201 | 1.3.4.3.4.4.17 | Add FPGA ASSP interface tests | 1d? | 2021-05-03 | 2021-05-03 | 100% | Greg |

Notes:
- 169: backend?
- 170: Greg to talk to KC
- 172: PLL? Tim, bootloader?
- 175: backend?
- 176: backend?
- 177: backend?
- 178: Tim
- 181: v
- 182: v
- 183: v
- 185: v
- 186: v
- 187: v
- 188: v
- 189: 50%
- 190: v
- 191: v
- 192: v
- 193: v
- 194: v
- 195: v
- 196: v
- 197: v
- 199: v
- 200: v
- 201: v

| ID | WBS | Task | Duration | Start | Finish | Predecessors | Complete | Constraint | Resources |
| --- | --- | --- | --- | --- | --- | --- | --- | --- | --- |
| 202 | 1.3.4.3.4.5 | **Emulation Validation** | 1d? | 2021-05-03 | 2021-05-03 |  | 96% |  |  |
| 203 | 1.3.4.3.4.5.1 | Validate UART | 1d? | 2021-05-03 | 2021-05-03 |  | 100% |  | Greg |
| 204 | 1.3.4.3.4.5.2 | Validate I2C master | 1d? | 2021-05-03 | 2021-05-03 |  | 100% |  | Greg |
| 205 | 1.3.4.3.4.5.3 | Validate QSPI master | 1d? | 2021-05-03 | 2021-05-03 |  | 100% |  | Greg |
| 206 | 1.3.4.3.4.5.4 | Validate GPIO | 1d? | 2021-05-03 | 2021-05-03 |  | 100% |  | Greg |
| 207 | 1.3.4.3.4.5.5 | Validate GPIO interrupts | 1d? | 2021-05-03 | 2021-05-03 |  | 100% |  | Greg |
| 208 | 1.3.4.3.4.5.6 | Validate CAM | 1d? | 2021-05-03 | 2021-05-03 |  | 50% |  | Greg |
| 209 | 1.3.4.3.4.5.7 | Validate I2C slave | 1d? | 2021-05-03 | 2021-05-03 |  | 100% |  | Greg |
| 210 | 1.3.4.3.4.5.8 | Validate PWM | 1d? | 2021-05-03 | 2021-05-03 |  | 100% |  | Greg |
| 211 | 1.3.4.3.4.5.9 | Validate timers | 1d? | 2021-05-03 | 2021-05-03 |  | 100% |  | Greg |
| 212 | 1.3.4.3.4.5.10 | Validate interrupts | 1d? | 2021-05-03 | 2021-05-03 |  | 100% |  | Greg |
| 213 | 1.3.4.3.4.5.11 | Validate all memory | 1d? | 2021-05-03 | 2021-05-03 |  | 100% |  | Greg |
| 214 | 1.3.4.3.4.5.12 | Validate boot | 1d? | 2021-05-03 | 2021-05-03 |  | 100% |  | Greg |
| 215 | 1.3.4.3.4.5.13 | Validate debug access | 1d? | 2021-05-03 | 2021-05-03 |  | 100% |  | Greg |
| 216 | 1.3.4.3.4.5.14 | Validate Clocks | 1d? | 2021-05-03 | 2021-05-03 |  | 100% |  | Greg |
| 217 | 1.3.4.3.5 | **Backend Design Update** | 2d? | 2021-05-04 | 2021-05-05 |  |  |  |  |
| 218 | 1.3.4.3.5.1 | RC Backend feedback update | 1d? | 2021-05-05 | 2021-05-05 | 222 |  |  | CMC |
| 219 | 1.3.4.3.5.2 | Silver Backend feedback update | 1d? | 2021-05-04 | 2021-05-04 | 223 |  |  | CMC |
| 220 | 1.3.4.4 | **SoC RTL Milestones** | 2d? | 2021-05-03 | 2021-05-04 |  |  |  |  |
| 221 | 1.3.4.4.1 | Milestone 1 - Golden RTL for emulation | 1d? | 2021-05-03 | 2021-05-03 |  |  |  |  |
| 222 | 1.3.4.4.2 | Milestone 2 - RC for backend release | 1d? | 2021-05-04 | 2021-05-04 | 61, 117 |  |  |  |
| 223 | 1.3.4.4.3 | Milestone 3 - Silver for backend release | 1d? | 2021-05-03 | 2021-05-03 |  |  |  |  |
| 224 | 1.3.4.4.4 | Milestone 4 - Golden for backend release | 1d? | 2021-05-03 | 2021-05-03 |  |  |  |  |
| 225 | 1.3.5 | RTL Freeze/Golden RTL | 20d | 2021-05-03 | 2021-05-28 |  |  | start no earlier than 2021-05-03 | Greg |
| 226 | 1.3.6 | Do synthesis | 30d | 2021-05-03 | 2021-06-11 |  |  | start no earlier than 2021-04-12 | Tim |
| 227 | 1.3.7 | Complete synthesis/Golden netlist | 0d | 2021-07-05 | 2021-07-05 |  |  | start no earlier than 2021-07-05 | Tim |

Notes:
- 203: v
- 204: v
- 205: v
- 206: v
- 207: v
- 208: 50%
- 209: v
- 210: v
- 211: v
- 212: v
- 213: v
- 214: v
- 215: v
- 216: v
- 218: backend
- 219: backend
- 221: early Sept
- 222: later Sept
- 223: Tim
- 224: Tim
- 225: QuickLogic
- 226: QuickLogic
- 227: Quicklogic

| ID | WBS | Task | Duration | Start | Finish | Predecessors | Constraint | Resources |
| --- | --- | --- | --- | --- | --- | --- | --- | --- |
| 228 | 1.4 | **SoC BackEnd design** | 207.12d? | 2021-05-03 | 2022-02-16 |  |  |  |
| 229 | 1.4.1 | Initial (informal) place and route | 1d? | 2021-05-03 | 2021-05-03 |  |  |  |
| 230 | 1.4.2 | Start place and route | 1d | 2021-11-15 | 2021-11-16 | 26 | start no earlier than 2021-11-15 | CMC |
| 231 | 1.4.3 | Publish GDS Freeze checklist to Github | 5d | 2021-11-15 | 2021-11-22 |  | start no earlier than 2021-11-15 | CMC |
| 232 | 1.4.4 | Complete place and route, GDS | 52d | 2021-11-15 | 2022-01-26 |  | start no earlier than 2021-11-15 | CMC |
| 233 | 1.4.5 | Complete Design submission (MPW2245, est. delivery date 2022-06-30) | 1d | 2022-01-25 | 2022-01-26 |  | start no earlier than 2022-01-25 | CMC |
| 234 | 1.4.6 | Final submission date for MPW2245 | 1d? | 2022-02-15 | 2022-02-16 |  | start no earlier than 2022-02-15 | CMC |
| 235 | 1.5 | **SoC Packaging and Test** | 35.5d? | 2022-01-26 | 2022-03-16 |  |  |  |
| 236 | 1.5.1 | Prepare IC production test plan and upload to Github | 5d? | 2022-01-26 | 2022-02-02 | 232 | start no earlier than 2021-09-27 | Anthony |
| 237 | 1.5.2 | Prepare packaging plan (low volume, ~50 I/Os, wire-bonding) and upload to Github | 1d | 2022-01-26 | 2022-01-27 | 232 |  | CMC |
| 238 | 1.5.3 | Chip package design complete | 10d | 2022-01-28 | 2022-02-11 | 237 | start no earlier than 2022-01-28 | CMC |
| 239 | 1.5.4 | Device test complete | 1d? | 2022-03-15 | 2022-03-16 | 245 |  | Tuan |
| 240 | 1.6 | **Bench PCB Design and Manufacture** | 140.5d? | 2021-10-18 | 2022-05-02 |  |  |  |
| 241 | 1.6.1 | Upload PCB Specification to Github | 2.5d? | 2021-10-18 | 2021-10-20 |  | start no earlier than 2021-10-18 | Anthony; James |
| 242 | 1.6.2 | PCB Schematic Design | 2.5d | 2021-10-25 | 2021-10-27 | 241 | start no earlier than 2021-10-25 | Anthony; James |
| 243 | 1.6.3 | PCB Layout | 5d | 2022-02-11 | 2022-02-18 | 238, 241 | start no earlier than 2021-10-25 | Anthony; James |
| 244 | 1.6.4 | PCB manufacturing and assembly | 10d? | 2022-02-28 | 2022-03-14 | 242, 243 | start no earlier than 2022-02-28 | Anthony; James |
| 245 | 1.6.5 | Initial bringup PCB testing | 1.5d | 2022-03-14 | 2022-03-15 | 244 | start no earlier than 2021-12-06 | Anthony; James |
| 246 | 1.6.6 | Characterization plan (testing operation of the first received board and chip) complete and upload to Github | 0.5d? | 2022-05-02 | 2022-05-02 |  | start no earlier than 2022-05-02 | Anthony; James |
| 247 | 1.7 | **DVK PCB Design and Manufacture** | 49.38d? | 2022-02-18 | 2022-04-28 |  |  |  |
| 248 | 1.7.1 | Upload PCB Specification to github | 2.5d? | 2022-02-18 | 2022-02-22 | 243 | start no earlier than 2021-11-08 | Anthony; James |
| 249 | 1.7.2 | PCB Schematic Design | 2.5d? | 2022-02-22 | 2022-02-25 | 248 | start no earlier than 2021-11-15 | Anthony; James |
| 250 | 1.7.3 | PCB Layout | 5d? | 2022-02-25 | 2022-03-04 | 249 | start no earlier than 2021-11-22 | Anthony; James |
| 251 | 1.7.4 | PCB manufacturing and assembly | 10d? | 2022-03-15 | 2022-03-29 | 245, 250 | start no earlier than 2021-12-09 | Anthony; James |
| 252 | 1.7.5 | Characterization plan (testing operation of the first received board and chip) complete and upload to Github | 0.5d? | 2022-04-28 | 2022-04-28 |  | start no earlier than 2022-04-28 | Anthony; James |
| 253 | 1.7.6 | Initial bringup PCB testing | 1.5d? | 2022-03-29 | 2022-03-31 | 251 | start no earlier than 2022-01-06 | Anthony; James |
| 254 | 1.7.7 | PCB User Guide | 2.5d? | 2022-03-31 | 2022-04-04 | 253 | start no earlier than 2022-01-11 | Anthony; James |

Notes:
- 229: to be scheduled
- 232: Hugh to create/work with Foundry on checklists
- 234: fill in the final deadline
- 236: No production test plan for this device.
- 237: depend on backend design completion
- 238: need to check
- 242: PCB Design Complete = PCB Schematic design + PCB Layout
- 243: Date = backend + 15 days
- 244: Date = Lin 243 + 20 days
- 245: Date = Line 244 + 3 days
- 246: Date = Line 245 + TBD
- 248: Initial Devkit specification was presented in June at HW TG. Needs review with Hugh O'Keeffe

| ID | WBS | Task | Duration | Start | Finish | Complete | Resources |
| --- | --- | --- | --- | --- | --- | --- | --- |
| 255 | 1.8 | **Test SW Integration** | 1d? | 2021-05-03 | 2021-05-03 | 80% |  |
| 256 | 1.8.1 | Structure prototype HAL as needed from PULP SDK | 1d? | 2021-05-03 | 2021-05-03 | 100% | Greg |
| 257 | 1.8.2 | Initial FreeRTOS/HAL/MCU integration | 1d? | 2021-05-03 | 2021-05-03 | 100% | Greg |
| 258 | 1.8.3 | Complete Starter project | 1d? | 2021-05-03 | 2021-05-03 | 100% | Greg |
| 259 | 1.8.4 | Specify and complete FreeRTOS demo application (TensorFlow Lite); | 1d? | 2021-05-03 | 2021-05-03 | 100% | Greg |
